# ABP Planificacion

Schedule from MS Project, 2018-09-10 to 2019-05-24.

## Calendars

- Estándar: Mon-Fri 09:00-13:00, 15:00-19:00; Sat-Sun off.

## Resources

| Resource | Rate | Cost per use |
| --- | --- | --- |
| Débora Galdeano González | 18 | 18 |
| Marines Ánton Castelló | 18 | 18 |
| María Sánchez Marqués | 18 | 18 |
| Jose Ramon Barea Cecilia | 18 | 18 |
| David Ramón Sevilla | 18 | 18 |
| Jose Vicente Anton Coy | 18 | 18 |
| Jesus Valiente | 18 | 18 |

## Schedule

| ID | WBS | Task | Type | Duration | Start | Finish | Total slack | Constraint |
| --- | --- | --- | --- | --- | --- | --- | --- | --- |
| 1 | 1 | **Proyectos Multimedia** |  | 185d | 2018-09-10 | 2019-05-24 |  |  |
| 2 | 1.1 | **Hito 0** |  | 22d | 2018-09-10 | 2018-10-09 |  |  |
| 3 | 1.1.1 | **Iteracion 1** |  | 13d | 2018-09-10 | 2018-09-26 |  |  |
| 4 | 1.1.1.1 | Rellenar documento de Concepto del proyecto |  | 9.6h | 2018-09-10 | 2018-09-11 | 183.8d | start no earlier than 2018-09-10 |
| 5 | 1.1.1.2 | Rellenar Version inicial del documento Especificacion |  | 9.6h | 2018-09-10 | 2018-09-11 | 183.8d |  |
| 6 | 1.1.1.3 | Sin tarea | manual | 1d? | 2018-09-10 | 2018-09-10 |  |  |
| 7 | 1.1.2 | **Iteracion 2** |  | 9d | 2018-09-27 | 2018-10-09 |  |  |
| 8 | 1.1.2.1 | Completar y Revisar documento Especificacion |  | 9.6h | 2018-09-27 | 2018-09-28 | 170.8d |  |
| 9 | 1.1.2.2 | Crear WBS del proyecto project |  | 28.8h | 2018-09-27 | 2018-10-02 | 168.4d |  |
| 10 | 1.1.2.3 | Crear plan general (tareas y precedencias basicas) en project |  | 28.8h | 2018-09-27 | 2018-10-02 | 168.4d |  |
| 11 | 1.1.2.4 | Elaborar el Presupuesto(hoja de calculo) |  | 57.6h | 2018-09-27 | 2018-10-08 | 164.8d |  |
| 12 | 1.2 | **Hito 1** |  | 53d | 2018-10-10 | 2018-12-21 | 0d |  |
| 13 | 1.2.1 | **Iteracion 3** |  | 11d | 2018-10-10 | 2018-10-24 |  |  |
| 14 | 1.2.1.1 | <Tarea nueva> | manual | 1d? | 2018-10-10 | 2018-10-10 |  |  |
| 15 | 1.2.2 | **Iteracion 4** |  | 10d | 2018-10-25 | 2018-11-07 |  |  |
| 16 | 1.2.2.1 | <Tarea nueva> | manual | 1d? | 2018-10-25 | 2018-10-25 |  |  |
| 17 | 1.2.3 | **Iteracion 5** |  | 10d | 2018-11-08 | 2018-11-21 |  |  |
| 18 | 1.2.3.1 | <Tarea nueva> | manual | 1d? | 2018-11-08 | 2018-11-08 |  |  |
| 19 | 1.2.4 | **Iteracion 6** |  | 10d | 2018-11-22 | 2018-12-05 |  |  |
| 20 | 1.2.4.1 | <Tarea nueva> | manual | 1d? | 2018-11-22 | 2018-11-22 |  |  |
| 21 | 1.2.5 | **Iteracion 7** |  | 12d | 2018-12-06 | 2018-12-21 |  |  |
| 22 | 1.2.5.1 | <Tarea nueva> | manual | 1d? | 2018-12-06 | 2018-12-06 |  |  |
| 23 | 1.2.6 | Detallar plan iteraciones del mes de Noviembre. Creación Subtareas y precedencias en Project | manual | 1d | 2018-10-10 | 2018-10-10 |  |  |
| 24 | 1.2.7 | Detallar plan iteraciones del mes de Noviembre. Asignar recursos a las tareas en Project | manual | 1d? | 2018-10-10 | 2018-10-10 |  |  |
| 25 | 1.2.8 | Detallar plan iteraciones del mes de Diciembre. Creación Subtareas y precedencias en Project | manual | 1d? | 2018-10-10 | 2018-10-10 |  |  |
| 26 | 1.2.9 | Detallar plan iteraciones del mes de Diciembre. Asignar recursos a las tareas en Project | manual | 1d? | 2018-10-10 | 2018-10-10 |  |  |
| 27 | 1.2.10 | Rellenar documento Gestión de riesgos | manual | 1d? | 2018-10-10 | 2018-10-10 |  |  |
| 28 | 1.2.11 | Registrar tiempos y % de realización de tareas en Project | manual | 1d? | 2018-10-10 | 2018-10-10 |  |  |
| 29 | 1.2.12 | Comparar la planificación prevista y real en Project hito 1 | manual | 1d? | 2018-10-10 | 2018-10-10 |  |  |
| 30 | 1.2.13 | Aplicar el modelo EVA en Project | manual | 1d? | 2018-10-10 | 2018-10-10 |  |  |
| 31 | 1.2.14 | Confeccionar Informes de iteración e informe resumen de Hito 1 | manual | 1d? | 2018-10-10 | 2018-10-10 |  |  |
| 32 | 1.2.15 | Elaborar la presentación del Hito 1 | manual | 1d? | 2018-10-10 | 2018-10-10 |  |  |
| 33 | 1.2.16 | Exponer la presentación del Hito 1 | manual | 1d? | 2018-10-10 | 2018-10-10 |  |  |

| ID | WBS | Task | Type | Duration | Start | Finish | Total slack |
| --- | --- | --- | --- | --- | --- | --- | --- |
| 34 | 1.3 | **Hito 2** |  | 33d | 2018-12-11 | 2019-01-25 | 0d |
| 35 | 1.3.1 | **Navidad** |  | 23d | 2018-12-11 | 2019-01-11 |  |
| 36 | 1.3.1.1 | <Tarea nueva> | manual | 1d? | 2018-12-11 | 2018-12-12 |  |
| 37 | 1.3.2 | **Iteracion 8** |  | 10d | 2019-01-14 | 2019-01-25 |  |
| 38 | 1.3.2.1 | <Tarea nueva> | manual | 1d? | 2019-01-14 | 2019-01-14 |  |
| 39 | 1.3.3 | Revisar especificación proyecto | manual | 1d | 2018-12-11 | 2018-12-12 |  |
| 40 | 1.3.4 | Reestimar proyecto | manual | 1d? | 2018-12-11 | 2018-12-12 |  |
| 41 | 1.3.5 | Detallar plan iteraciones del mes de Enero. Creación Subtareas y precedencias en Project | manual | 1d? | 2018-12-11 | 2018-12-12 |  |
| 42 | 1.3.6 | Detallar plan iteraciones del mes de Enero. Asignar recursos a las tareas en Project | manual | 1d? | 2018-12-11 | 2018-12-12 |  |
| 43 | 1.3.7 | Registrar tiempos y % de realización de tareas en Project | manual | 1d? | 2018-12-11 | 2018-12-12 |  |
| 44 | 1.3.8 | Comparar la planificación prevista y real en Project hito 2 | manual | 1d? | 2018-12-11 | 2018-12-12 |  |
| 45 | 1.3.9 | Confeccionar Informes de iteración e informe resumen de Hito 2 | manual | 1d? | 2018-12-11 | 2018-12-12 |  |
| 46 | 1.4 | **Hito 3** |  | 45d | 2019-01-24 | 2019-03-27 | 0d |
| 47 | 1.4.1 | **Iteracion 9** |  | 10d | 2019-01-24 | 2019-02-06 |  |
| 48 | 1.4.1.1 | <Tarea nueva> | manual | 1d? | 2019-01-24 | 2019-01-24 |  |
| 49 | 1.4.2 | **Iteracion 10** |  | 10d | 2019-02-07 | 2019-02-20 |  |
| 50 | 1.4.2.1 | <Tarea nueva> | manual | 1d? | 2019-02-07 | 2019-02-07 |  |
| 51 | 1.4.3 | **Iteracion 11** |  | 9d | 2019-02-22 | 2019-03-06 |  |
| 52 | 1.4.3.1 | <Tarea nueva> | manual | 1d? | 2019-02-22 | 2019-02-22 |  |
| 53 | 1.4.4 | **Iteracion 12** |  | 15d | 2019-03-07 | 2019-03-27 |  |
| 54 | 1.4.4.1 | <Tarea nueva> | manual | 1d? | 2019-03-07 | 2019-03-07 |  |
| 55 | 1.4.5 | Detallar plan iteraciones del mes de Febrero-Marzo. Creación Subtareas y precedencias en Project | manual | 1d | 2019-01-24 | 2019-01-24 |  |
| 56 | 1.4.6 | Detallar plan iteraciones del mes de Febrero-Marzo Asignar recursos a las tareas en Project | manual | 1d? | 2019-01-24 | 2019-01-24 |  |
| 57 | 1.4.7 | Registrar tiempos y % de realización de tareas en Project | manual | 1d? | 2019-01-24 | 2019-01-24 |  |
| 58 | 1.4.8 | Comparar la planificación prevista y real en Project hito 3 | manual | 1d? | 2019-01-24 | 2019-01-24 |  |
| 59 | 1.4.9 | Confeccionar Informes de iteración e informe resumen de Hito 3 | manual | 1d? | 2019-01-24 | 2019-01-24 |  |
| 60 | 1.4.10 | Elaborar la presentación del Hito 3 | manual | 1d? | 2019-01-24 | 2019-01-24 |  |
| 61 | 1.4.11 | Exponer la presentación del Hito 3 | manual | 1d? | 2019-01-24 | 2019-01-24 |  |

| ID | WBS | Task | Type | Duration | Start | Finish | Total slack |
| --- | --- | --- | --- | --- | --- | --- | --- |
| 62 | 1.5 | **hito 4** |  | 42d | 2019-03-28 | 2019-05-24 | 0d |
| 63 | 1.5.1 | **Iteracion 13** |  | 15d | 2019-03-28 | 2019-04-17 |  |
| 64 | 1.5.1.1 | <Tarea nueva> | manual | 1d? | 2019-03-28 | 2019-03-28 |  |
| 65 | 1.5.2 | **Semana santa** |  | 13d | 2019-04-18 | 2019-05-05 |  |
| 66 | 1.5.2.1 | <Tarea nueva> | manual | 1d? | 2019-04-18 | 2019-04-18 |  |
| 67 | 1.5.3 | **Iteracion 14** |  | 15d | 2019-05-06 | 2019-05-24 |  |
| 68 | 1.5.3.1 | <Tarea nueva> | manual | 1d? | 2019-05-06 | 2019-05-06 |  |
| 69 | 1.5.4 | Detallar plan iteraciones del mes de Abril-Mayo. Creación Subtareas y precedencias en Project | manual | 1d | 2019-03-28 | 2019-03-28 |  |
| 70 | 1.5.5 | Detallar plan iteraciones del mes de Abril-Mayo. Asignar recursos a las tareas en Project | manual | 1d? | 2019-03-28 | 2019-03-28 |  |
| 71 | 1.5.6 | Registrar tiempos y % de realización de tareas en Project | manual | 1d? | 2019-03-28 | 2019-03-28 |  |
| 72 | 1.5.7 | Comparar la planificación prevista y real en Project hito 4 | manual | 1d? | 2019-03-28 | 2019-03-28 |  |
| 73 | 1.5.8 | Confeccionar Informes de iteración e informe resumen de Hito 4 | manual | 1d? | 2019-03-28 | 2019-03-28 |  |
| 74 | 1.5.9 | Elaborar la presentación del Hito 4 | manual | 1d? | 2019-03-28 | 2019-03-28 |  |
| 75 | 1.5.10 | Exponer la presentación del Hito 4 | manual | 1d? | 2019-03-28 | 2019-03-28 |  |
| 76 | 2 | **Técnicas Avanzadas de Gráficos** |  | 87d | 2019-01-24 | 2019-05-24 | 0d |
| 77 | 2.1 | **Hito 3** |  | 45d | 2019-01-24 | 2019-03-27 | 0d |
| 78 | 2.1.1 | **Iteracion 9** |  | 10d | 2019-01-24 | 2019-02-06 |  |
| 79 | 2.1.1.1 | <Tarea nueva> | manual | 1d? | 2019-01-24 | 2019-01-24 |  |
| 80 | 2.1.2 | **Iteracion 10** |  | 10d | 2019-02-07 | 2019-02-20 |  |
| 81 | 2.1.2.1 | <Tarea nueva> | manual | 1d? | 2019-02-07 | 2019-02-07 |  |
| 82 | 2.1.3 | **Iteracion 11** |  | 9d | 2019-02-22 | 2019-03-06 |  |
| 83 | 2.1.3.1 | <Tarea nueva> | manual | 1d? | 2019-02-22 | 2019-02-22 |  |
| 84 | 2.1.4 | **Iteracion 12** |  | 15d | 2019-03-07 | 2019-03-27 |  |
| 85 | 2.1.4.1 | <Tarea nueva> | manual | 1d? | 2019-03-07 | 2019-03-07 |  |
| 86 | 2.1.5 | Estructura básica del nodo (array de hijos, puntero a padre, puntero a entidad, funcionalidad básica -constructor, destructor, gets, sets, manejo de hijos….) | manual | 1d? | 2019-01-24 | 2019-01-24 |  |
| 87 | 2.1.6 | Recorrido-dibujado del árbol | manual | 1d? | 2019-01-24 | 2019-01-24 |  |
| 88 | 2.1.7 | Estructura básica de la entidad (Constructor, destructor, funciones… todas virtuales, vacías) | manual | 1d | 2019-01-24 | 2019-01-24 |  |
| 89 | 2.1.8 | Matrices (model, view, projection) y pila estáticas y su manejo | manual | 1d? | 2019-01-24 | 2019-01-24 |  |
| 90 | 2.1.9 | Estructura básica de la transformación (Constructor, destructor, matriz transformación…) | manual | 1d? | 2019-01-24 | 2019-01-24 |  |
| 91 | 2.1.10 | Operaciones de transformación (trasladar, rotar, escalar, identidad, trasponer, invertir, todas con GLM o GLMatrix) | manual | 1d? | 2019-01-24 | 2019-01-24 |  |
| 92 | 2.1.11 | Dibujado (begindraw, enddraw, manejo pila y matriz model) | manual | 1d? | 2019-01-24 | 2019-01-24 |  |
| 93 | 2.1.12 | Estructura básica de la cámara (Constructor, destructor, matriz proyección) | manual | 1d? | 2019-01-24 | 2019-01-24 |  |
| 94 | 2.1.13 | Rellenar matriz perspectiva (con GLM o GLMatrix) | manual | 1d | 2019-01-24 | 2019-01-24 |  |
| 95 | 2.1.14 | Estructura básica de la luz (Constructor, destructor) | manual | 1d? | 2019-01-24 | 2019-01-24 |  |
| 96 | 2.1.15 | Datos y funciones luz puntual | manual | 1d? | 2019-01-24 | 2019-01-24 |  |
| 97 | 2.1.16 | Estructura básica de la malla (Constructor, destructor) | manual | 1d? | 2019-01-24 | 2019-01-24 |  |
| 98 | 2.1.17 | Datos de mallas, texturas, materiales… (llamadas al gestor de recursos) | manual | 1d? | 2019-01-24 | 2019-01-24 |  |
| 99 | 2.1.18 | Dibujado de mallas (begindraw, enddraw, matriz model…) | manual | 1d? | 2019-01-24 | 2019-01-24 |  |
| 100 | 2.1.19 | Estructura básica del gestor de recursos (constructor, destructor, vectores de recursos) | manual | 1d? | 2019-01-24 | 2019-01-24 |  |
| 101 | 2.1.20 | Obtener recurso (gestión adecuada de memoria) | manual | 1d? | 2019-01-24 | 2019-01-24 |  |
| 102 | 2.1.21 | Estructura básica del recurso (constructor, destructor. Es virtual, vacío) | manual | 1d? | 2019-01-24 | 2019-01-24 |  |
| 103 | 2.1.22 | Estructura básica de la malla (constructor, destructor) | manual | 1d? | 2019-01-24 | 2019-01-24 |  |
| 104 | 2.1.23 | Lectura de disco (con assimp) | manual | 1d? | 2019-01-24 | 2019-01-24 |  |
| 105 | 2.1.24 | Creación de buffers de vértices, normales, índices… y relleno | manual | 1d? | 2019-01-24 | 2019-01-24 |  |
| 106 | 2.1.25 | Dibujado de las mallas (draw, con paso de los buffers a OpenGL o WebGL) | manual | 1d? | 2019-01-24 | 2019-01-24 |  |
| 107 | 2.1.26 | Estructura básica del material (constructor, destructor) | manual | 1d? | 2019-01-24 | 2019-01-24 |  |
| 108 | 2.1.27 | Leer material de disco (con librería o con parser propio) y rellenar valores | manual | 1d? | 2019-01-24 | 2019-01-24 |  |
| 109 | 2.1.28 | Dibujado de los materiales (preparar los materiales y cargarlos en OpenGL o WebGL) | manual | 1d? | 2019-01-24 | 2019-01-24 |  |
| 110 | 2.1.29 | Estructura básica del shader (constructor, destructor) | manual | 1d? | 2019-01-24 | 2019-01-24 |  |
| 111 | 2.1.30 | Lectura de shaders de disco (con parser propio) y guardarlo | manual | 1d? | 2019-01-24 | 2019-01-24 |  |
| 112 | 2.1.31 | Estructura básica de la interfaz (constructor, destructor, inicialización motor y openGL) | manual | 1d? | 2019-01-24 | 2019-01-24 |  |
| 113 | 2.1.32 | Funciones para crear cámaras y gestionarlas (manejo de las cámaras, registro, cálculo de la matriz view) | manual | 1d? | 2019-01-24 | 2019-01-24 |  |
| 114 | 2.1.33 | Funciones para crear luces y gestionarlas (manejo de las luces registro, cálculo de la matriz light) | manual | 1d? | 2019-01-24 | 2019-01-24 |  |
| 115 | 2.1.34 | Funciones para crear transformaciones (creación de varios nodos con las transformaciones, manejo de las transformaciones) | manual | 1d? | 2019-01-24 | 2019-01-24 |  |
| 116 | 2.1.35 | Funciones para crear mallas y animaciones | manual | 1d? | 2019-01-24 | 2019-01-24 |  |
| 117 | 2.1.36 | Funciones para crear shaders y gestionarlos | manual | 1d? | 2019-01-24 | 2019-01-24 |  |
| 118 | 2.1.37 | Shader básico (Sombreado de Phong, reflexión de Phong) con materiales | manual | 1d? | 2019-01-24 | 2019-01-24 |  |
| 119 | 2.1.38 | Integración con la aplicación | manual | 1d? | 2019-01-24 | 2019-01-24 |  |
| 120 | 2.1.39 | Realización de una fachada entre el motor y la aplicación o videojuego | manual | 1d? | 2019-01-24 | 2019-01-24 |  |
| 121 | 2.1.40 | Librería matemática (GLM o GLMatrix) | manual | 1d? | 2019-01-24 | 2019-01-24 |  |
| 122 | 2.1.41 | [Solo CED] Librería de lectura de mallas (assimp…) | manual | 1d? | 2019-01-24 | 2019-01-24 |  |
| 123 | 2.1.42 | [Solo CED] Librería de ventanas, entrada/salida... (GLFW…) | manual | 1d? | 2019-01-24 | 2019-01-24 |  |

| ID | WBS | Task | Type | Duration | Start | Finish | Total slack |
| --- | --- | --- | --- | --- | --- | --- | --- |
| 124 | 2.2 | **Hito 4** |  | 42d | 2019-03-28 | 2019-05-24 | 0d |
| 125 | 2.2.1 | **Iteracion 13** |  | 15d | 2019-03-28 | 2019-04-17 |  |
| 126 | 2.2.1.1 | <Tarea nueva> | manual | 1d? | 2019-03-28 | 2019-03-28 |  |
| 127 | 2.2.2 | **Semana santa** |  | 13d | 2019-04-18 | 2019-05-05 |  |
| 128 | 2.2.2.1 | <Tarea nueva> | manual | 1d? | 2019-04-18 | 2019-04-18 |  |
| 129 | 2.2.3 | **Iteracion 14** |  | 15d | 2019-05-06 | 2019-05-24 |  |
| 130 | 2.2.3.1 | <Tarea nueva> | manual | 1d? | 2019-05-06 | 2019-05-06 |  |
| 131 | 2.2.4 | Estructura básica de la animación (Constructor, destructor) | manual | 1d | 2019-03-28 | 2019-03-28 |  |
| 132 | 2.2.5 | Datos de animaciones, mallas, texturas, materiales (multiples, con llamadas al gestor de recursos) | manual | 1d? | 2019-03-28 | 2019-03-28 |  |
| 133 | 2.2.6 | Dibujado de texturas (preparar las texturas y cargarlas en OpenGL o WebGL) | manual | 1d? | 2019-03-28 | 2019-03-28 |  |
| 134 | 2.2.7 | Shader básico (Sombreado de Phong, reflexión de Phong) con materiales y texturas | manual | 1d? | 2019-03-28 | 2019-03-28 |  |
| 135 | 2.2.8 | Shader Cartoon | manual | 1d? | 2019-03-28 | 2019-03-28 |  |
| 136 | 2.2.9 | Bounding boxes (incluye retocar nodos, entidades y recursos malla) | manual | 1d? | 2019-03-28 | 2019-03-28 |  |
| 137 | 2.2.10 | Backface culling | manual | 1d? | 2019-03-28 | 2019-03-28 |  |
| 138 | 2.2.11 | Frustum culling | manual | 1d? | 2019-03-28 | 2019-03-28 |  |
| 139 | 2.2.12 | Sombras proyectadas | manual | 1d? | 2019-03-28 | 2019-03-28 |  |
| 140 | 2.2.13 | Sistema de partículas (sólo la incorporación en el motor) | manual | 1d? | 2019-03-28 | 2019-03-28 |  |
| 141 | 3 | **Videojuegos 1** |  | 121d | 2018-10-10 | 2019-03-27 |  |
| 142 | 3.1 | **Hito 1** |  | 53d | 2018-10-10 | 2018-12-21 | 0d |
| 143 | 3.1.1 | **Iteracion 3** |  | 11d | 2018-10-10 | 2018-10-24 |  |
| 144 | 3.1.1.1 | <Tarea nueva> | manual | 1d? | 2018-10-10 | 2018-10-10 |  |
| 145 | 3.1.2 | **Iteracion 4** |  | 10d | 2018-10-25 | 2018-11-07 |  |
| 146 | 3.1.2.1 | <Tarea nueva> | manual | 1d? | 2018-10-25 | 2018-10-25 |  |
| 147 | 3.1.3 | **Iteracion 5** |  | 10d | 2018-11-08 | 2018-11-21 |  |
| 148 | 3.1.3.1 | <Tarea nueva> | manual | 1d? | 2018-11-08 | 2018-11-08 |  |

| ID | WBS | Task | Type | Duration | Start | Finish | Total slack |
| --- | --- | --- | --- | --- | --- | --- | --- |
| 149 | 3.1.4 | **Iteracion 6** |  | 10d | 2018-11-22 | 2018-12-05 |  |
| 150 | 3.1.4.1 | <Tarea nueva> | manual | 1d? | 2018-11-22 | 2018-11-22 |  |
| 151 | 3.1.5 | **Iteracion 7** |  | 12d | 2018-12-06 | 2018-12-21 |  |
| 152 | 3.1.5.1 | <Tarea nueva> | manual | 1d? | 2018-12-06 | 2018-12-06 |  |
| 153 | 3.1.6 | Documento de diseño de mecánicas de los NPCs | manual | 1d | 2018-10-10 | 2018-10-10 |  |
| 154 | 3.1.7 | Documento de diseño de toma de decisión: espacio y métodos | manual | 1d? | 2018-10-10 | 2018-10-10 |  |
| 155 | 3.1.8 | Documento de diseño técnico del motor de IA | manual | 1d? | 2018-10-10 | 2018-10-10 |  |
| 156 | 3.1.9 | Sistema de toma de decisión con Árboles de Decisión | manual | 1d? | 2018-10-10 | 2018-10-10 |  |
| 157 | 3.1.10 | Sistema de toma de decisión con Behaviour Trees | manual | 1d? | 2018-10-10 | 2018-10-10 |  |
| 158 | 3.1.11 | Sistema de percepción sensorial (vista, oído, olfato, canales…) | manual | 1d? | 2018-10-10 | 2018-10-10 |  |
| 159 | 3.2 | **Hito 2** |  | 33d | 2018-12-11 | 2019-01-25 | 0d |
| 160 | 3.2.1 | **Navidad** |  | 23d | 2018-12-11 | 2019-01-11 |  |
| 161 | 3.2.1.1 | <Tarea nueva> | manual | 1d? | 2018-12-11 | 2018-12-12 |  |
| 162 | 3.2.2 | **Iteracion 8** |  | 10d | 2019-01-14 | 2019-01-25 |  |
| 163 | 3.2.2.1 | <Tarea nueva> | manual | 1d? | 2019-01-14 | 2019-01-14 |  |
| 164 | 3.2.3 | Sistema de depuración visual in-game de la IA | manual | 1d | 2018-12-11 | 2018-12-12 |  |
| 165 | 3.2.4 | Sistema de distribución central de tiempo de proceso (Scheduling) | manual | 1d? | 2018-12-11 | 2018-12-12 |  |
| 166 | 3.3 | **Hito 3** |  | 45d | 2019-01-24 | 2019-03-27 | 0d |
| 167 | 3.3.1 | **Iteracion 9** |  | 10d | 2019-01-24 | 2019-02-06 |  |
| 168 | 3.3.1.1 | <Tarea nueva> | manual | 1d? | 2019-01-24 | 2019-01-24 |  |
| 169 | 3.3.2 | **Iteracion 10** |  | 10d | 2019-02-07 | 2019-02-20 |  |
| 170 | 3.3.2.1 | <Tarea nueva> | manual | 1d? | 2019-02-07 | 2019-02-07 |  |
| 171 | 3.3.3 | **Iteracion 11** |  | 9d | 2019-02-22 | 2019-03-06 |  |
| 172 | 3.3.3.1 | <Tarea nueva> | manual | 1d? | 2019-02-22 | 2019-02-22 |  |

| ID | WBS | Task | Type | Duration | Start | Finish | Total slack |
| --- | --- | --- | --- | --- | --- | --- | --- |
| 173 | 3.3.4 | **Iteracion 12** |  | 15d | 2019-03-07 | 2019-03-27 |  |
| 174 | 3.3.4.1 | <Tarea nueva> | manual | 1d? | 2019-03-07 | 2019-03-07 |  |
| 175 | 3.3.5 | Flocking: comportamiento grupal emergente | manual | 1d | 2019-01-24 | 2019-01-24 |  |
| 176 | 3.3.6 | Editor in-game de parámetros y comportamientos de la IA | manual | 1d | 2019-01-24 | 2019-01-24 |  |
| 177 | 3.3.7 | Sistema de logros y puntuaciones web | manual | 1d | 2019-01-24 | 2019-01-24 |  |
| 178 | 4 | **Videojuegos 2** |  | 163d | 2018-10-10 | 2019-05-24 | 0d |
| 179 | 4.1 | **Hito 1** |  | 53d | 2018-10-10 | 2018-12-21 | 0d |
| 180 | 4.1.1 | **Iteracion 3** |  | 11d | 2018-10-10 | 2018-10-24 |  |
| 181 | 4.1.1.1 | <Tarea nueva> | manual | 1d? | 2018-10-10 | 2018-10-10 |  |
| 182 | 4.1.2 | **Iteracion 4** |  | 10d | 2018-10-25 | 2018-11-07 |  |
| 183 | 4.1.2.1 | <Tarea nueva> | manual | 1d? | 2018-10-25 | 2018-10-25 |  |
| 184 | 4.1.3 | **Iteracion 5** |  | 10d | 2018-11-08 | 2018-11-21 |  |
| 185 | 4.1.3.1 | <Tarea nueva> | manual | 1d? | 2018-11-08 | 2018-11-08 |  |
| 186 | 4.1.4 | **Iteracion 6** |  | 10d | 2018-11-22 | 2018-12-05 |  |
| 187 | 4.1.4.1 | <Tarea nueva> | manual | 1d? | 2018-11-22 | 2018-11-22 |  |
| 188 | 4.1.5 | **Iteracion 7** |  | 12d | 2018-12-06 | 2018-12-21 |  |
| 189 | 4.1.5.1 | <Tarea nueva> | manual | 1d? | 2018-12-06 | 2018-12-06 |  |
| 190 | 4.1.6 | Diseño e implementación de la arquitectura basada en objetos (diagrama de clases e implementación) | manual | 1d | 2018-10-10 | 2018-10-10 |  |
| 191 | 4.1.7 | Diseño e implementación de la arquitectura basada en componentes (diagrama de clases e implementación) | manual | 1d | 2018-10-10 | 2018-10-10 |  |
| 192 | 4.1.8 | Control del player: movimiento y colisiones sin motor de físicas | manual | 1d | 2018-10-10 | 2018-10-10 |  |
| 193 | 4.1.9 | Mecánicas básicas entidades sin IA | manual | 1d | 2018-10-10 | 2018-10-10 |  |
| 194 | 4.1.10 | Mecánicas de acción | manual | 1d | 2018-10-10 | 2018-10-10 |  |
| 195 | 4.1.11 | Mecánicas de rol | manual | 1d | 2018-10-10 | 2018-10-10 |  |
| 196 | 4.1.12 | Creación de un cargador de niveles | manual | 1d | 2018-10-10 | 2018-10-10 |  |
| 197 | 4.1.13 | Diseño y creación de niveles | manual | 1d | 2018-10-10 | 2018-10-10 |  |
| 198 | 4.1.14 | Implementación de cámara de seguimiento | manual | 1d | 2018-10-10 | 2018-10-10 |  |

| ID | WBS | Task | Type | Duration | Start | Finish | Total slack |
| --- | --- | --- | --- | --- | --- | --- | --- |
| 199 | 4.2 | **Hito 2** |  | 33d | 2018-12-11 | 2019-01-25 | 0d |
| 200 | 4.2.1 | **Navidad** |  | 23d | 2018-12-11 | 2019-01-11 |  |
| 201 | 4.2.1.1 | <Tarea nueva> | manual | 1d? | 2018-12-11 | 2018-12-12 |  |
| 202 | 4.2.2 | **Iteracion 8** |  | 10d | 2019-01-14 | 2019-01-25 |  |
| 203 | 4.2.2.1 | <Tarea nueva> | manual | 1d? | 2019-01-14 | 2019-01-14 |  |
| 204 | 4.2.3 | Power-ups y elementos adicionales | manual | 1d | 2018-12-11 | 2018-12-12 |  |
| 205 | 4.2.4 | Integración de librería para GUI | manual | 1d | 2018-12-11 | 2018-12-12 |  |
| 206 | 4.2.5 | Implementación de menús | manual | 1d | 2018-12-11 | 2018-12-12 |  |
| 207 | 4.2.6 | Implementación del HUD | manual | 1d | 2018-12-11 | 2018-12-12 |  |
| 208 | 4.3 | **Hito 3** |  | 45d | 2019-01-24 | 2019-03-27 | 0d |
| 209 | 4.3.1 | **Iteracion 9** |  | 10d | 2019-01-24 | 2019-02-06 |  |
| 210 | 4.3.1.1 | <Tarea nueva> | manual | 1d? | 2019-01-24 | 2019-01-24 |  |
| 211 | 4.3.2 | **Iteracion 10** |  | 10d | 2019-02-07 | 2019-02-20 |  |
| 212 | 4.3.2.1 | <Tarea nueva> | manual | 1d? | 2019-02-07 | 2019-02-07 |  |
| 213 | 4.3.3 | **Iteracion 11** |  | 9d | 2019-02-22 | 2019-03-06 |  |
| 214 | 4.3.3.1 | <Tarea nueva> | manual | 1d? | 2019-02-22 | 2019-02-22 |  |
| 215 | 4.3.4 | **Iteracion 12** |  | 15d | 2019-03-07 | 2019-03-27 |  |
| 216 | 4.3.4.1 | <Tarea nueva> | manual | 1d? | 2019-03-07 | 2019-03-07 |  |
| 217 | 4.3.5 | Implementación de cesped y vegetación | manual | 1d | 2019-01-24 | 2019-01-24 |  |
| 218 | 4.3.6 | Implementación de nubes | manual | 1d | 2019-01-24 | 2019-01-24 |  |
| 219 | 4.3.7 | Implementación de sistemas de partículas | manual | 1d | 2019-01-24 | 2019-01-24 |  |
| 220 | 4.4 | **Hito 4** |  | 42d | 2019-03-28 | 2019-05-24 | 0d |
| 221 | 4.4.1 | **Iteracion 13** |  | 15d | 2019-03-28 | 2019-04-17 |  |
| 222 | 4.4.1.1 | <Tarea nueva> | manual | 1d? | 2019-03-28 | 2019-03-28 |  |

| ID | WBS | Task | Type | Duration | Start | Finish | Total slack |
| --- | --- | --- | --- | --- | --- | --- | --- |
| 223 | 4.4.2 | **Semana santa** |  | 13d | 2019-04-18 | 2019-05-05 |  |
| 224 | 4.4.2.1 | <Tarea nueva> | manual | 1d? | 2019-04-18 | 2019-04-18 |  |
| 225 | 4.4.3 | **Iteracion 14** |  | 15d | 2019-05-06 | 2019-05-24 |  |
| 226 | 4.4.3.1 | <Tarea nueva> | manual | 1d? | 2019-05-06 | 2019-05-06 |  |
| 227 | 4.4.4 | Sin tareas o eso esperemos | manual | 1d? | 2019-03-28 | 2019-03-28 |  |
| 228 | 5 | **Postproduccion Digital** |  | 163d | 2018-10-10 | 2019-05-24 | 0d |
| 229 | 5.1 | **Hito 1** |  | 53d | 2018-10-10 | 2018-12-21 | 0d |
| 230 | 5.1.1 | **Iteracion 3** |  | 11d | 2018-10-10 | 2018-10-24 |  |
| 231 | 5.1.1.1 | <Tarea nueva> | manual | 1d? | 2018-10-10 | 2018-10-10 |  |
| 232 | 5.1.2 | **Iteracion 4** |  | 10d | 2018-10-25 | 2018-11-07 |  |
| 233 | 5.1.2.1 | <Tarea nueva> | manual | 1d? | 2018-10-25 | 2018-10-25 |  |
| 234 | 5.1.3 | **Iteracion 5** |  | 10d | 2018-11-08 | 2018-11-21 |  |
| 235 | 5.1.3.1 | <Tarea nueva> | manual | 1d? | 2018-11-08 | 2018-11-08 |  |
| 236 | 5.1.4 | **Iteracion 6** |  | 10d | 2018-11-22 | 2018-12-05 |  |
| 237 | 5.1.4.1 | <Tarea nueva> | manual | 1d? | 2018-11-22 | 2018-11-22 |  |
| 238 | 5.1.5 | **Iteracion 7** |  | 12d | 2018-12-06 | 2018-12-21 |  |
| 239 | 5.1.5.1 | <Tarea nueva> | manual | 1d? | 2018-12-06 | 2018-12-06 |  |
| 240 | 5.1.6 | Vídeo con animación del logo de la empresa | manual | 1d | 2018-10-10 | 2018-10-10 |  |
| 241 | 5.1.7 | Cartel juego/proyecto | manual | 1d | 2018-10-10 | 2018-10-10 |  |
| 242 | 5.2 | **Hito 2 y 3** |  | 76d | 2018-12-11 | 2019-03-27 | 0d |
| 243 | 5.2.1 | **Navidad** |  | 23d | 2018-12-11 | 2019-01-11 |  |
| 244 | 5.2.1.1 | <Tarea nueva> | manual | 1d? | 2018-12-11 | 2018-12-12 |  |
| 245 | 5.2.2 | **Iteracion 8** |  | 10d | 2019-01-14 | 2019-01-25 |  |
| 246 | 5.2.2.1 | <Tarea nueva> | manual | 1d? | 2019-01-14 | 2019-01-14 |  |

| ID | WBS | Task | Type | Duration | Start | Finish | Total slack |
| --- | --- | --- | --- | --- | --- | --- | --- |
| 247 | 5.2.3 | **Iteracion 9** |  | 10d | 2019-01-24 | 2019-02-06 |  |
| 248 | 5.2.3.1 | <Tarea nueva> | manual | 1d? | 2019-01-24 | 2019-01-24 |  |
| 249 | 5.2.4 | **Iteracion 10** |  | 10d | 2019-02-07 | 2019-02-20 |  |
| 250 | 5.2.4.1 | <Tarea nueva> | manual | 1d? | 2019-02-07 | 2019-02-07 |  |
| 251 | 5.2.5 | **Iteracion 11** |  | 9d | 2019-02-22 | 2019-03-06 |  |
| 252 | 5.2.5.1 | <Tarea nueva> | manual | 1d? | 2019-02-22 | 2019-02-22 |  |
| 253 | 5.2.6 | **Iteracion 12** |  | 15d | 2019-03-07 | 2019-03-27 |  |
| 254 | 5.2.6.1 | <Tarea nueva> | manual | 1d? | 2019-03-07 | 2019-03-07 |  |
| 255 | 5.2.7 | Trailer juego/proyecto | manual | 1d | 2018-12-11 | 2018-12-12 |  |
| 256 | 5.2.8 | Making of juego/proyecto | manual | 1d | 2018-12-11 | 2018-12-12 |  |
| 257 | 5.3 | **Hito 4** |  | 42d | 2019-03-28 | 2019-05-24 | 0d |
| 258 | 5.3.1 | **Iteracion 13** |  | 15d | 2019-03-28 | 2019-04-17 |  |
| 259 | 5.3.1.1 | <Tarea nueva> | manual | 1d? | 2019-03-28 | 2019-03-28 |  |
| 260 | 5.3.2 | **Semana santa** |  | 13d | 2019-04-18 | 2019-05-05 |  |
| 261 | 5.3.2.1 | <Tarea nueva> | manual | 1d? | 2019-04-18 | 2019-04-18 |  |
| 262 | 5.3.3 | **Iteracion 14** |  | 15d | 2019-05-06 | 2019-05-24 |  |
| 263 | 5.3.3.1 | <Tarea nueva> | manual | 1d? | 2019-05-06 | 2019-05-06 |  |
| 264 | 5.3.4 | Créditos | manual | 1d | 2019-03-28 | 2019-03-28 |  |
| 265 | 5.3.5 | Vídeo final juego / explicación parte del proyecto | manual | 1d | 2019-03-28 | 2019-03-28 |  |
| 266 | 6 | **Técnicas para el Diseño Sonoro** |  | 163d | 2018-10-10 | 2019-05-24 | 0d |
| 267 | 6.1 | **Hito 1-2** |  | 78d | 2018-10-10 | 2019-01-25 | 0d |
| 268 | 6.1.1 | **Iteracion 3** |  | 11d | 2018-10-10 | 2018-10-24 |  |
| 269 | 6.1.1.1 | <Tarea nueva> | manual | 1d? | 2018-10-10 | 2018-10-10 |  |
| 270 | 6.1.2 | **Iteracion 4** |  | 10d | 2018-10-25 | 2018-11-07 |  |
| 271 | 6.1.2.1 | <Tarea nueva> | manual | 1d? | 2018-10-25 | 2018-10-25 |  |

| ID | WBS | Task | Type | Duration | Start | Finish | Total slack |
| --- | --- | --- | --- | --- | --- | --- | --- |
| 272 | 6.1.3 | **Iteracion 5** |  | 10d | 2018-11-08 | 2018-11-21 |  |
| 273 | 6.1.3.1 | <Tarea nueva> | manual | 1d? | 2018-11-08 | 2018-11-08 |  |
| 274 | 6.1.4 | **Iteracion 6** |  | 10d | 2018-11-22 | 2018-12-05 |  |
| 275 | 6.1.4.1 | <Tarea nueva> | manual | 1d? | 2018-11-22 | 2018-11-22 |  |
| 276 | 6.1.5 | **Iteracion 7** |  | 12d | 2018-12-06 | 2018-12-21 |  |
| 277 | 6.1.5.1 | <Tarea nueva> | manual | 1d? | 2018-12-06 | 2018-12-06 |  |
| 278 | 6.1.6 | **Navidad** |  | 23d | 2018-12-11 | 2019-01-11 |  |
| 279 | 6.1.6.1 | <Tarea nueva> | manual | 1d? | 2018-12-11 | 2018-12-12 |  |
| 280 | 6.1.7 | **Iteracion 8** |  | 10d | 2019-01-14 | 2019-01-25 |  |
| 281 | 6.1.7.1 | <Tarea nueva> | manual | 1d? | 2019-01-14 | 2019-01-14 |  |
| 282 | 6.1.8 | Síntesis | manual | 1d | 2018-10-10 | 2018-10-10 |  |
| 283 | 6.1.9 | Grabaciones propias | manual | 1d | 2018-10-10 | 2018-10-10 |  |
| 284 | 6.1.10 | Sonidos externos | manual | 1d | 2018-10-10 | 2018-10-10 |  |
| 285 | 6.1.11 | Música | manual | 1d | 2018-10-10 | 2018-10-10 |  |
| 286 | 6.1.12 | Cue Sheet | manual | 1d | 2018-10-10 | 2018-10-10 |  |
| 287 | 6.1.13 | Hoja de metadatos | manual | 1d | 2018-10-10 | 2018-10-10 |  |
| 288 | 6.1.14 | Integración del motor de audio en el juego con prueba de concepto | manual | 1d | 2018-10-10 | 2018-10-10 |  |
| 289 | 6.2 | **Hito 3** |  | 45d | 2019-01-24 | 2019-03-27 | 0d |
| 290 | 6.2.1 | **Iteracion 9** |  | 10d | 2019-01-24 | 2019-02-06 |  |
| 291 | 6.2.1.1 | <Tarea nueva> | manual | 1d? | 2019-01-24 | 2019-01-24 |  |
| 292 | 6.2.2 | **Iteracion 10** |  | 10d | 2019-02-07 | 2019-02-20 |  |
| 293 | 6.2.2.1 | <Tarea nueva> | manual | 1d? | 2019-02-07 | 2019-02-07 |  |
| 294 | 6.2.3 | **Iteracion 11** |  | 9d | 2019-02-22 | 2019-03-06 |  |
| 295 | 6.2.3.1 | <Tarea nueva> | manual | 1d? | 2019-02-22 | 2019-02-22 |  |

| ID | WBS | Task | Type | Duration | Start | Finish | Total slack |
| --- | --- | --- | --- | --- | --- | --- | --- |
| 296 | 6.2.4 | **Iteracion 12** |  | 15d | 2019-03-07 | 2019-03-27 |  |
| 297 | 6.2.4.1 | <Tarea nueva> | manual | 1d? | 2019-03-07 | 2019-03-07 |  |
| 298 | 6.2.5 | Resto de la biblioteca (máx. 1/3), cuesheet y metadatos finales | manual | 1d | 2019-01-24 | 2019-01-24 |  |
| 299 | 6.3 | **Hito 4** |  | 42d | 2019-03-28 | 2019-05-24 | 0d |
| 300 | 6.3.1 | **Iteracion 13** |  | 15d | 2019-03-28 | 2019-04-17 |  |
| 301 | 6.3.1.1 | <Tarea nueva> | manual | 1d? | 2019-03-28 | 2019-03-28 |  |
| 302 | 6.3.2 | **Semana santa** |  | 13d | 2019-04-18 | 2019-05-05 |  |
| 303 | 6.3.2.1 | <Tarea nueva> | manual | 1d? | 2019-04-18 | 2019-04-18 |  |
| 304 | 6.3.3 | **Iteracion 14** |  | 15d | 2019-05-06 | 2019-05-24 |  |
| 305 | 6.3.3.1 | <Tarea nueva> | manual | 1d? | 2019-05-06 | 2019-05-06 |  |
| 306 | 6.3.4 | Integración de sonido y música en el juego | manual | 1d | 2019-03-28 | 2019-03-28 |  |
| 307 | 6.3.5 | Post producción (mezcla y masterización in-game) | manual | 1d | 2019-03-28 | 2019-03-28 |  |
| 308 | 6.3.6 | Sonido generado proceduralmente in-game | manual | 1d | 2019-03-28 | 2019-03-28 |  |
| 309 | 7 | **Realidad Virtual** |  | 163d | 2018-10-10 | 2019-05-24 | 0d |
| 310 | 7.1 | **Hito 1** |  | 53d | 2018-10-10 | 2018-12-21 | 0d |
| 311 | 7.1.1 | **Iteracion 3** |  | 11d | 2018-10-10 | 2018-10-24 |  |
| 312 | 7.1.1.1 | <Tarea nueva> | manual | 1d? | 2018-10-10 | 2018-10-10 |  |
| 313 | 7.1.2 | **Iteracion 4** |  | 10d | 2018-10-25 | 2018-11-07 |  |
| 314 | 7.1.2.1 | <Tarea nueva> | manual | 1d? | 2018-10-25 | 2018-10-25 |  |
| 315 | 7.1.3 | **Iteracion 5** |  | 10d | 2018-11-08 | 2018-11-21 |  |
| 316 | 7.1.3.1 | <Tarea nueva> | manual | 1d? | 2018-11-08 | 2018-11-08 |  |
| 317 | 7.1.4 | **Iteracion 6** |  | 10d | 2018-11-22 | 2018-12-05 |  |
| 318 | 7.1.4.1 | <Tarea nueva> | manual | 1d? | 2018-11-22 | 2018-11-22 |  |
| 319 | 7.1.5 | **Iteracion 7** |  | 12d | 2018-12-06 | 2018-12-21 |  |
| 320 | 7.1.5.1 | <Tarea nueva> | manual | 1d? | 2018-12-06 | 2018-12-06 |  |
| 321 | 7.1.6 | Boceto de los personajes | manual | 1d | 2018-10-10 | 2018-10-10 |  |
| 322 | 7.1.7 | Bocetos de los elementos | manual | 1d | 2018-10-10 | 2018-10-10 |  |
| 323 | 7.1.8 | Bocetos del entorno | manual | 1d | 2018-10-10 | 2018-10-10 |  |

| ID | WBS | Task | Type | Duration | Start | Finish | Total slack |
| --- | --- | --- | --- | --- | --- | --- | --- |
| 324 | 7.2 | **Hito 2,3** |  | 76d | 2018-12-11 | 2019-03-27 | 0d |
| 325 | 7.2.1 | **Navidad** |  | 23d | 2018-12-11 | 2019-01-11 |  |
| 326 | 7.2.1.1 | <Tarea nueva> | manual | 1d? | 2018-12-11 | 2018-12-12 |  |
| 327 | 7.2.2 | **Iteracion 8** |  | 10d | 2019-01-14 | 2019-01-25 |  |
| 328 | 7.2.2.1 | <Tarea nueva> | manual | 1d? | 2019-01-14 | 2019-01-14 |  |
| 329 | 7.2.3 | **Iteracion 9** |  | 10d | 2019-01-24 | 2019-02-06 |  |
| 330 | 7.2.3.1 | <Tarea nueva> | manual | 1d? | 2019-01-24 | 2019-01-24 |  |
| 331 | 7.2.4 | **Iteracion 10** |  | 10d | 2019-02-07 | 2019-02-20 |  |
| 332 | 7.2.4.1 | <Tarea nueva> | manual | 1d? | 2019-02-07 | 2019-02-07 |  |
| 333 | 7.2.5 | **Iteracion 11** |  | 9d | 2019-02-22 | 2019-03-06 |  |
| 334 | 7.2.5.1 | <Tarea nueva> | manual | 1d? | 2019-02-22 | 2019-02-22 |  |
| 335 | 7.2.6 | **Iteracion 12** |  | 15d | 2019-03-07 | 2019-03-27 |  |
| 336 | 7.2.6.1 | <Tarea nueva> | manual | 1d? | 2019-03-07 | 2019-03-07 |  |
| 337 | 7.2.7 | Modelado de los personajes | manual | 1d | 2018-12-11 | 2018-12-12 |  |
| 338 | 7.2.8 | Texturizado de los personajes | manual | 1d | 2018-12-11 | 2018-12-12 |  |
| 339 | 7.2.9 | Modelado del entorno y elementos | manual | 1d | 2018-12-11 | 2018-12-12 |  |
| 340 | 7.3 | **Hito 4** |  | 42d | 2019-03-28 | 2019-05-24 | 0d |
| 341 | 7.3.1 | **Iteracion 13** |  | 15d | 2019-03-28 | 2019-04-17 |  |
| 342 | 7.3.1.1 | <Tarea nueva> | manual | 1d? | 2019-03-28 | 2019-03-28 |  |
| 343 | 7.3.2 | **Semana santa** |  | 13d | 2019-04-18 | 2019-05-05 |  |
| 344 | 7.3.2.1 | <Tarea nueva> | manual | 1d? | 2019-04-18 | 2019-04-18 |  |
| 345 | 7.3.3 | **Iteracion 14** |  | 15d | 2019-05-06 | 2019-05-24 |  |
| 346 | 7.3.3.1 | <Tarea nueva> | manual | 1d? | 2019-05-06 | 2019-05-06 |  |
| 347 | 7.3.4 | Rigging de los personajes | manual | 1d | 2019-03-28 | 2019-03-28 |  |
| 348 | 7.3.5 | Captura de movimiento | manual | 1d | 2019-03-28 | 2019-03-28 |  |
| 349 | 7.3.6 | Animación de los personajes | manual | 1d | 2019-03-28 | 2019-03-28 |  |
| 350 | 7.3.7 | Texturizado del entorno y elementos | manual | 1d | 2019-03-28 | 2019-03-28 |  |
